# For-WBS

How a schedule from MS Project XML changed from version to version. A marks actual dates.

## Version 1 (data date 2007-12-07, saved 2008-01-25, file CRO-MensajesAfore.xml)

Note of the change: Primer commit

| ID | WBS | Task | Duration | Start | Finish | Predecessors | Complete | Total float | Constraint |
| --- | --- | --- | --- | --- | --- | --- | --- | --- | --- |
| 1 | 1 | **Mensajes Afore** | 27.06d? | 2008-01-04 18:30 A | 2008-01-31 19:00 |  | 83% | 0d |  |
| 2 | 1.1 | **WF_Recepción de Petición** | 7d? | 2008-01-08 08:30 A | 2008-01-14 19:00 |  | 75% | 17d |  |
| 3 | 1.1.1 | **TA-Elaborar el Documento de Aceptación de Petición** | 1d | 2008-01-08 08:30 A | 2008-01-08 19:00 |  | 25% | 23d |  |
| 4 |  | A1 - Elaborar el documento de aceptación de petición por el Gerente | 8h | 2008-01-08 08:30 A | 2008-01-08 19:00 |  | 25% | 23d | start no earlier than 2007-12-07 08:30 |
| 5 | 1.1.2 | **TA-Elaborar el Documento de Arquitectura (solo si el proyecto es nuevo)** | 1d? | 2008-01-14 09:00 A | 2008-01-14 19:00 A |  | 100% |  |  |
| 6 |  | A1 - Elaborar el documento de Arquitectura por el Gerente | 8h? | 2008-01-14 09:00 A | 2008-01-14 19:00 A |  | 100% |  | start no earlier than 2008-01-14 08:30 |
| 7 | 1.1.3 | **TA-Asignar Petición a Líder de Proyecto** | 1d? | 2008-01-09 09:00 A | 2008-01-09 19:00 A |  | 100% |  |  |
| 8 |  | A1 - Asignar Petición 1993144 al Líder de Proyecto por el Gerente | 8h? | 2008-01-09 09:00 A | 2008-01-09 19:00 A |  | 100% |  | start no earlier than 2008-01-09 08:30 |
| 9 | 1.2 | **WF_Administracion de Requerimientos** | 7d? | 2008-01-10 09:00 A | 2008-01-16 19:00 |  | 93% | 15d |  |
| 10 | 1.2.1 | **TA-Iniciar el Proceso de Elicitación** | 1d? | 2008-01-11 09:00 A | 2008-01-11 19:00 A |  | 100% |  |  |
| 11 |  | A1 - Realizar reunión con el cliente para ver detalles de los requerimientos | 8h? | 2008-01-11 09:00 A | 2008-01-11 19:00 A |  | 100% |  | start no earlier than 2008-01-11 08:30 |
| 12 | 1.2.2 | **TA-Elaborar la ERS a Menor Detalle** | 1d? | 2008-01-11 08:30 | 2008-01-11 19:00 |  |  | 20d |  |
| 13 |  | A1 - Modificar la ERS para el proyecto CapturarAbono a menor detalle | 8h? | 2008-01-11 08:30 | 2008-01-11 19:00 |  |  | 20d | start no earlier than 2008-01-11 08:30 |
| 14 | 1.2.3 | **Realizar Pre-Estimación e Identificación de Riesgos** | 5d? | 2008-01-10 09:00 A | 2008-01-14 19:00 |  | 83% | 17d |  |
| 15 |  | A1 - Elaborar la preestimación en base a los casos de uso identificados | 40h | 2008-01-10 09:00 A | 2008-01-14 19:00 A |  | 100% |  | start no earlier than 2008-01-10 08:30 |
| 16 |  | A1 - Realizar la identificación de riesgos con el Gerente, Líder de Proyecto | 8h? | 2008-01-14 09:00 | 2008-01-14 19:00 |  |  | 17d | start no earlier than 2008-01-14 08:30 |
| 17 | 1.2.4 | **TA-Elaborar ERS a Detalle** | 2d | 2008-01-14 09:00 A | 2008-01-15 19:00 A |  | 100% |  |  |
| 18 |  | A1 - Elaborar la ERS para el proyecto CapturarAbono a detalle | 16h | 2008-01-14 09:00 A | 2008-01-15 19:00 A |  | 100% |  | start no earlier than 2008-01-14 08:30 |
| 19 | 1.2.5 | **TA-Realizar Modelo de Casos de Uso** | 2d | 2008-01-15 09:00 A | 2008-01-16 19:00 A |  | 100% |  |  |
| 20 |  | A1 -Modificar CU-0001-RealizarAbono | 16h | 2008-01-15 09:00 A | 2008-01-16 19:00 A |  | 100% |  | start no earlier than 2008-01-15 08:30 |
| 21 |  | A2 - Elaborar CU-0008-MostrarMensajesAfore | 16h | 2008-01-15 09:00 A | 2008-01-16 19:00 A |  | 100% |  | start no earlier than 2008-01-15 08:30 |
| 22 | 1.2.6 | **TA-Realizar de Interfaz de Usuario Prototipo(Si Aplica)** | 2d | 2008-01-14 09:00 A | 2008-01-15 19:00 A |  | 100% |  |  |
| 23 |  | A1 - Modificar interfaz prototipo 0001-CapturarAbono | 16h | 2008-01-14 09:00 A | 2008-01-15 19:00 A |  | 100% |  | start no earlier than 2008-01-14 08:30 |
| 24 | 1.2.7 | **TA-Realizar Aceptación de la ERS por Líder de Proyecto y Equipo de Proyecto.** | 2d | 2008-01-15 09:00 A | 2008-01-16 19:00 A |  | 100% |  |  |
| 25 |  | A1 - Realizar aceptación de la ERS por el Líder de Proyecto y Equipo de Proyecto. | 16h | 2008-01-15 09:00 A | 2008-01-16 19:00 A |  | 100% |  | start no earlier than 2008-01-15 08:30 |
| 26 | 1.2.8 | **TA-Realizar Revisión de Requerimientos por Q/A** | 2d | 2008-01-15 09:00 A | 2008-01-16 19:00 A |  | 100% |  |  |
| 27 |  | A1 - Realizar Revisión de Requerimientos por Q/A | 16h | 2008-01-15 09:00 A | 2008-01-16 19:00 A |  | 100% |  | start no earlier than 2008-01-15 08:30 |
| 28 | 1.2.9 | **TA-Realizar Revisión de Requerimientos por Gerente** | 2d | 2008-01-15 09:00 A | 2008-01-16 19:00 A |  | 100% |  |  |
| 29 |  | A1 - Realizar Revisión de Requerimientos por Gerente | 16h | 2008-01-15 09:00 A | 2008-01-16 19:00 A |  | 100% |  | start no earlier than 2008-01-15 08:30 |
| 30 | 1.2.10 | **TA-Validar Especificación de Requerimientos por Cliente** | 2d | 2008-01-15 09:00 A | 2008-01-16 19:00 A |  | 100% |  |  |
| 31 |  | A1 - Validar ERS por Cliente | 16h | 2008-01-15 09:00 A | 2008-01-16 19:00 A |  | 100% |  | start no earlier than 2008-01-15 08:30 |
| 32 | 1.2.11 | **TA-Elaborar matriz de rastreabilidad** | 1d? | 2008-01-16 09:00 A | 2008-01-16 19:00 A |  | 100% |  |  |
| 33 |  | A1 - Elaborar matriz de rastreabilidad de Documentacion | 8h? | 2008-01-16 09:00 A | 2008-01-16 19:00 A |  | 100% |  | start no earlier than 2008-01-16 08:30 |
| 34 |  | A2 - Elaborar matriz de rastreabilidad de Código | 8h? | 2008-01-16 09:00 A | 2008-01-16 19:00 A |  | 100% |  | start no earlier than 2008-01-16 08:30 |
| 35 | 1.2.12 | **TA-Actualizar Documento de Arquitectura** | 1d? | 2008-01-14 09:00 A | 2008-01-14 19:00 A |  | 100% |  |  |
| 36 |  | A1 - Actualizar documento de arquitectura | 8h? | 2008-01-14 09:00 A | 2008-01-14 19:00 A |  | 100% |  | start no earlier than 2008-01-14 08:30 |
| 37 | 1.3 | **WF_Diseño** | 2d? | 2008-01-16 09:00 A | 2008-01-17 19:00 A |  | 100% |  |  |
| 38 | 1.3.1 | **TA-Diseñar Base de Datos** | 2d | 2008-01-16 09:00 A | 2008-01-17 19:00 A |  | 100% |  |  |
| 39 |  | A1 - Diseñar Base de Datos | 16h | 2008-01-16 09:00 A | 2008-01-17 19:00 A |  | 100% |  | start no earlier than 2008-01-16 08:30 |
| 40 | 1.3.2 | **TA-Diseñar Pantallas** | 1d? | 2008-01-16 09:00 A | 2008-01-16 19:00 A |  | 100% |  |  |
| 41 |  | A1 - Diseñar interfaz 0001-CapturarAbono | 8h? | 2008-01-16 09:00 A | 2008-01-16 19:00 A |  | 100% |  | start no earlier than 2008-01-16 08:30 |
| 42 | 1.4 | **WF_Planificación** | 9d? | 2008-01-08 09:00 A | 2008-01-16 19:00 |  | 94% | 15d |  |
| 43 | 1.4.1 | **TA-Asignar Recursos al Gerente** | 1d? | 2008-01-09 09:00 A | 2008-01-09 19:00 A |  | 100% |  |  |
| 44 |  | A1 - Asignación de recursos para el proyecto por Gerente | 8h? | 2008-01-09 09:00 A | 2008-01-09 19:00 A |  | 100% |  | start no earlier than 2008-01-09 08:30 |
| 45 | 1.4.2 | **TA-Elaborar el Plan de Desarrollo de Software** | 1d? | 2008-01-14 09:00 A | 2008-01-14 19:00 A |  | 100% |  |  |
| 46 |  | A1 - Elaborar el plan de desarrollo del proyecto CapturarAbono | 8h? | 2008-01-14 09:00 A | 2008-01-14 19:00 A |  | 100% |  | start no earlier than 2008-01-14 08:30 |
| 47 | 1.4.3 | **TA-Realizar Estimaciones** | 2d | 2008-01-14 09:00 A | 2008-01-15 19:00 A |  | 100% |  |  |
| 48 |  | A1 - Realizar estimación del proyecto | 16h | 2008-01-14 09:00 A | 2008-01-15 19:00 A |  | 100% |  | start no earlier than 2008-01-14 08:30 |
| 49 | 1.4.4 | **TA-Identificar y Evaluar Riesgos** | 2d | 2008-01-14 09:00 A | 2008-01-15 19:00 A |  | 100% |  |  |
| 50 |  | A1 - Realizar la identificación de riesgos con el Gerente, Equipo de Proyecto, y Líder de Proyecto | 16h | 2008-01-14 09:00 A | 2008-01-15 19:00 A |  | 100% |  | start no earlier than 2008-01-14 08:30 |
| 51 | 1.4.5 | **TA-Elaborar Plan Iterativo (Si Aplica)** | 1d? | 2008-01-08 09:00 | 2008-01-08 19:00 |  |  | 23d |  |
| 52 |  | A1 - Elaborar el plan iterativo (Si Aplica) | 8h? | 2008-01-08 09:00 | 2008-01-08 19:00 |  |  | 23d | start no earlier than 2008-01-08 08:30 |
| 53 | 1.4.6 | **TA-Elaborar Plan de Aceptación de Producto** | 1d? | 2008-01-15 09:00 A | 2008-01-15 19:00 A |  | 100% |  |  |
| 54 |  | A1 - Elaborar plan de aceptación de producto | 8h? | 2008-01-15 09:00 A | 2008-01-15 19:00 A |  | 100% |  | start no earlier than 2008-01-15 08:30 |
| 55 | 1.4.7 | **TA-Identificar el Plan de Calidad del proyecto incorporado en el Plan de Desarrollo de SW.** | 1d? | 2008-01-14 09:00 A | 2008-01-14 19:00 A |  | 100% |  |  |
| 56 |  | A1 -Identificar el Plan de Calidad del proyecto | 8h? | 2008-01-14 09:00 A | 2008-01-14 19:00 A |  | 100% |  | start no earlier than 2008-01-14 08:30 |
| 57 | 1.4.8 | **TA-Identificar el Plan de Administración de Configuración incorporado en el Plan de Desarrollo de SW.** | 1d? | 2008-01-14 09:00 A | 2008-01-14 19:00 A |  | 100% |  |  |
| 58 |  | A1 - Identificar el Plan de Administración de Configuración | 8h? | 2008-01-14 09:00 A | 2008-01-14 19:00 A |  | 100% |  | start no earlier than 2008-01-14 08:30 |
| 59 | 1.4.9 | **TA-Elaborar Plan de Pruebas del Proyecto** | 2d | 2008-01-15 09:00 A | 2008-01-16 19:00 A |  | 100% |  |  |
| 60 |  | A1 - Elaborar plan de pruebas de proyecto | 16h | 2008-01-15 09:00 A | 2008-01-16 19:00 A |  | 100% |  | start no earlier than 2008-01-15 08:30 |
| 61 | 1.4.10 | **TA-Identificar las Metricas del Proyecto** | 1d? | 2008-01-14 09:00 A | 2008-01-14 19:00 A |  | 100% |  |  |
| 62 |  | A1 - Identificar las Métricas del Proyecto | 8h? | 2008-01-14 09:00 A | 2008-01-14 19:00 A |  | 100% |  | start no earlier than 2008-01-14 08:30 |
| 63 | 1.4.11 | **TA-Aceptar Compromisos Sobre los Planes Gerente y Equipo de Proyecto** | 2d | 2008-01-15 09:00 A | 2008-01-16 19:00 A | 45 | 100% |  |  |
| 64 |  | A1 - Realizar aceptación de compromisos sobre los planes por el Gerente y Equipo de Proyecto | 16h | 2008-01-15 09:00 A | 2008-01-16 19:00 A |  | 100% |  | start no earlier than 2007-12-07 08:30 |
| 65 | 1.4.12 | **TA-Realizar Revisión de los Planes por Q/A** | 1d? | 2008-01-15 09:00 A | 2008-01-15 19:00 A | 45 | 100% |  |  |
| 66 |  | A1 - Realizar la revisión de los planes por Q/A | 8h? | 2008-01-15 09:00 A | 2008-01-15 19:00 A |  | 100% |  | start no earlier than 2007-12-07 08:30 |
| 67 | 1.4.13 | **TA-Aprobar Plan de Aceptación de Producto por Cliente** | 2d? | 2008-01-15 09:00 A | 2008-01-16 19:00 A |  | 100% |  |  |
| 68 |  | A1 - Realizar aprobación del Plan de Aceptación de Producto por el cliente | 16h? | 2008-01-15 09:00 A | 2008-01-16 19:00 A |  | 100% |  | start no earlier than 2008-01-15 08:30 |
| 69 | 1.5 | **WF_Monitoreo y Control** | 18.06d | 2008-01-04 18:30 A | 2008-01-22 19:00 A |  | 100% |  |  |
| 70 | 1.5.1 | **TA-Monitorear y Reportar el Estado del Proyecto** | 17d | 2008-01-04 18:30 A | 2008-01-21 18:30 A |  | 100% |  |  |

| ID | WBS | Task | Duration | Start | Finish | Complete | Total float | Constraint |
| --- | --- | --- | --- | --- | --- | --- | --- | --- |
| 71 | 1.5.1.1 | **Realizar Monitoreo con el Equipo de Proyecto** | 17d | 2008-01-04 18:30 A | 2008-01-21 18:30 A | 100% |  |  |
| 72 |  | A1 - Realizar monitoreo con el Equipo de Proyecto | 136h | 2008-01-04 18:30 A | 2008-01-21 18:30 A | 100% |  | finish no earlier than 2008-01-21 18:30 |
| 73 | 1.5.1.2 | **Realizar Monitoreo con la Gerencia** | 17d | 2008-01-04 18:30 A | 2008-01-21 18:30 A | 100% |  |  |
| 74 |  | A1 - Realizar monitoreo con la gerencia | 136h | 2008-01-04 18:30 A | 2008-01-21 18:30 A | 100% |  | finish no earlier than 2008-01-21 18:30 |
| 75 | 1.5.2 | **TA-Preparar el Cierre de Ciclo de Vida del Proyecto** | 2d | 2008-01-21 09:00 A | 2008-01-22 19:00 A | 100% |  |  |
| 76 |  | A1 - Preparar el cierre de ciclo de vida del proyecto | 16h | 2008-01-21 09:00 A | 2008-01-22 19:00 A | 100% |  | start no earlier than 2008-01-21 08:30 |
| 77 | 1.5.3 | **TA-Realizar la Evaluación del Cierre de Ciclo de Vida / Proyecto** | 2d | 2008-01-21 09:00 A | 2008-01-22 19:00 A | 100% |  |  |
| 78 |  | A1 - Realizar la evaluación del cierre de ciclo de vida / proyecto | 16h | 2008-01-21 09:00 A | 2008-01-22 19:00 A | 100% |  | start no earlier than 2008-01-21 08:30 |
| 79 | 1.6 | **WF_Medición y Analisis** | 17.06d | 2008-01-04 18:30 A | 2008-01-21 19:00 A | 100% |  |  |
| 80 | 1.6.1 | **TA-Recoletar Métricas de Proyecto** | 17d | 2008-01-04 18:30 A | 2008-01-21 18:30 A | 100% |  |  |
| 81 |  | A1 - Recolectar métricas de proyecto | 136h | 2008-01-04 18:30 A | 2008-01-21 18:30 A | 100% |  | finish no earlier than 2008-01-21 18:30 |
| 82 | 1.6.2 | **TA-Recolectar Métricas de Calidad** | 8d | 2008-01-14 09:00 A | 2008-01-21 19:00 A | 100% |  |  |
| 83 |  | A1 - Recolectar métricas de calidad | 64h | 2008-01-14 09:00 A | 2008-01-21 19:00 A | 100% |  | start no earlier than 2008-01-14 08:30 |
| 84 | 1.7 | **WF_Administración de Configuración** | 17d? | 2008-01-14 09:00 A | 2008-01-30 19:00 | 91% | 1d |  |
| 85 | 1.7.1 | **TA-Crear Repositorios del Proyecto** | 1d? | 2008-01-14 09:00 A | 2008-01-14 19:00 A | 100% |  |  |
| 86 |  | A1 - Crear repositorios de proyecto | 8h? | 2008-01-14 09:00 A | 2008-01-14 19:00 A | 100% |  | start no earlier than 2008-01-14 08:30 |
| 87 | 1.7.2 | **TA-Elaborar Reportes de Estado de Items de Configuración** | 17d | 2008-01-14 09:00 A | 2008-01-30 19:00 | 88% | 1d |  |
| 88 |  | A1 - Elaborar reporte de estado de ítems de configuración | 136h | 2008-01-14 09:00 A | 2008-01-30 19:00 | 88% | 1d | start no earlier than 2008-01-12 08:30 |
| 89 | 1.7.3 | **TA-Realizar las Auditorías de Configuración Física** | 2d | 2008-01-16 09:00 A | 2008-01-17 19:00 A | 100% |  |  |
| 90 |  | A1 - Realizar las auditorías de configuración física | 16h | 2008-01-16 09:00 A | 2008-01-17 19:00 A | 100% |  | start no earlier than 2008-01-16 08:30 |
| 91 | 1.7.4 | **TA-Realizar las Auditorías de Configuración Funcional** | 2d | 2008-01-17 09:00 A | 2008-01-18 19:00 A | 100% |  |  |
| 92 |  | A1 - Realizar auditorias de configuración funcional | 16h | 2008-01-17 09:00 A | 2008-01-18 19:00 A | 100% |  | start no earlier than 2008-01-17 08:30 |
| 93 | 1.8 | **WF_Codificación** | 3d | 2008-01-16 09:00 A | 2008-01-18 19:00 | 67% | 13d |  |
| 94 | 1.8.1 | **TA-Realizar Codificación** | 3d | 2008-01-16 09:00 A | 2008-01-18 19:00 A | 100% |  |  |
| 95 |  | A1 - ERS-CapturarAbono - Codificar CU-0001-RealizarAbono | 16h | 2008-01-16 09:00 A | 2008-01-17 19:00 A | 100% |  | start no earlier than 2008-01-16 08:30 |
| 96 |  | A2 - ERS-CapturarAbono - Codificar CU-0008-MostrarMensajesAfore | 16h | 2008-01-16 09:00 A | 2008-01-17 19:00 A | 100% |  | start no earlier than 2008-01-16 08:30 |
| 97 |  | C1 - ERS-CapturarAbono - Codificar CU-0001-RealizarAbono | 16h | 2008-01-17 09:00 A | 2008-01-18 19:00 A | 100% |  | start no earlier than 2008-01-17 08:30 |
| 98 |  | C1 - ERS-CapturarAbono - Codificar CU-0008-MostrarMensajesAfore | 16h | 2008-01-17 09:00 A | 2008-01-18 19:00 A | 100% |  | start no earlier than 2008-01-17 08:30 |
| 99 | 1.8.2 | **TA-Integración** | 3d | 2008-01-16 09:00 | 2008-01-18 19:00 |  | 13d |  |
| 100 |  | A1 - Realizar integración de codigo para revisión | 16h | 2008-01-16 09:00 | 2008-01-17 19:00 |  | 14d | start no earlier than 2008-01-16 08:30 |
| 101 |  | A2 - Realizar integración de codigo para revisión | 16h | 2008-01-17 09:00 | 2008-01-18 19:00 |  | 13d | start no earlier than 2008-01-17 08:30 |
| 102 | 1.9 | **WF_Pruebas** | 3d | 2008-01-24 08:30 A | 2008-01-26 19:00 | 29% | 5d |  |
| 103 | 1.9.1 | **TA-Diseñar Casos de Prueba** | 2d | 2008-01-24 08:30 A | 2008-01-25 19:00 A | 100% |  |  |
| 104 |  | A1 - ERS-CapturarAbono - Diseñar CP-0001-RealizarAbono | 16h | 2008-01-24 08:30 A | 2008-01-25 19:00 A | 100% |  | start no earlier than 2008-01-15 08:30 |
| 105 |  | A1 - ERS CapturarAbono - Diseñar CP-0008-MostrarMensajesAfore | 16h | 2008-01-24 08:30 A | 2008-01-25 19:00 A | 100% |  | start no earlier than 2008-01-16 08:30 |
| 106 | 1.9.2 | **TA-Realizar Pruebas de Sistemas** | 2d | 2008-01-25 09:00 | 2008-01-26 19:00 |  | 5d |  |
| 107 |  | A1 - ERS-CapturarAbono - Probar CP-0001-RealizarAbono | 16h | 2008-01-25 09:00 | 2008-01-26 19:00 |  | 5d | start no earlier than 2008-01-25 08:30 |
| 108 |  | A2 - ERS-CapturarAbono - Probar CP-0008-MostrarMensajesAfore | 16h | 2008-01-25 09:00 | 2008-01-26 19:00 |  | 5d | start no earlier than 2008-01-25 08:30 |
| 109 |  | C1 - ERS-CapturarAbono - Probar CP-0001-RealizarAbono | 16h | 2008-01-25 09:00 | 2008-01-26 19:00 |  | 5d | start no earlier than 2008-01-25 08:30 |
| 110 |  | C1 - ERS-CapturarAbono - Probar CP-0008-MostrarMensajesAfore | 16h | 2008-01-25 09:00 | 2008-01-26 19:00 |  | 5d | start no earlier than 2008-01-25 08:30 |
| 111 | 1.9.3 | **TA-Realizar Seguimiento de Defectos** | 2d | 2008-01-25 09:00 | 2008-01-26 19:00 |  | 5d |  |
| 112 |  | A1 - Realizar seguimiento de defectos | 16h | 2008-01-25 09:00 | 2008-01-26 19:00 |  | 5d | start no earlier than 2008-01-25 08:30 |
| 113 | 1.10 | **WF_Q/A** | 3d | 2008-01-24 09:00 | 2008-01-26 19:00 |  | 5d |  |
| 114 | 1.10.1 | **TA-Realizar Auditorías del Proyecto** | 3d | 2008-01-24 09:00 | 2008-01-26 19:00 |  | 5d |  |
| 115 |  | A1 - Realizar auditoria del proyecto | 24h | 2008-01-24 09:00 | 2008-01-26 19:00 |  | 5d | start no earlier than 2008-01-24 08:30 |
| 116 | 1.10.2 | **TA-Realizar Seguimiento de Desviaciones** | 3d | 2008-01-24 09:00 | 2008-01-26 19:00 |  | 5d |  |
| 117 |  | A1 - Realizar seguimiento de desviaciones | 24h | 2008-01-24 09:00 | 2008-01-26 19:00 |  | 5d | start no earlier than 2008-01-24 08:30 |
| 118 | 1.11 | **WF_Instalación** | 1d | 2008-01-31 09:00 | 2008-01-31 19:00 |  | 0d |  |
| 119 | 1.11.1 | **TA-Aprobación de Versión de Sistema** | 1d | 2008-01-31 09:00 | 2008-01-31 19:00 |  | 0d |  |
| 120 |  | A1 - Probar Sistema | 8h | 2008-01-31 09:00 | 2008-01-31 19:00 |  | 0d | start no earlier than 2008-01-31 08:30 |
| 121 | 1.11.2 | **TA-Instalar y Configurar Versión del Sistema** | 1d | 2008-01-31 09:00 | 2008-01-31 19:00 |  | 0d |  |
| 122 |  | A1 - Instalar y configurar la versión del sistema | 8h | 2008-01-31 09:00 | 2008-01-31 19:00 |  | 0d | start no earlier than 2008-01-31 08:30 |
| 123 | 1.12 | **WF_Capacitaciones** | 1d? | 2008-01-11 09:00 | 2008-01-11 19:00 |  | 20d |  |
| 124 | 1.12.1 | **TA-Realizar Capacitaciones** | 1d? | 2008-01-11 09:00 | 2008-01-11 19:00 |  | 20d |  |
| 125 |  | Ejemplo : A1 - Capacitación de <Tema de la Capacitación> | 8h? | 2008-01-11 09:00 | 2008-01-11 19:00 |  | 20d | start no earlier than 2008-01-11 08:30 |

## Version 2 (data date 2007-12-07, saved 2008-02-11, file CRO-MensajesAfore.mpp)

Note of the change: Primer commit

Last finish 2008-01-31 → 2008-02-06 (+6d). Complete tasks 44 → 51.

Added:

| ID | Task | Duration | Start | Finish | Constraint | Resources |
| --- | --- | --- | --- | --- | --- | --- |
| 122 | A1 - Instalar y configurar la versión del sistema a Prueba | 8h | 2008-01-31 09:00 A | 2008-01-31 19:00 A | start no earlier than 2008-01-31 08:30 | 90473663 - Ivan Rivera Montoya [12.5%] |

Changed:

| ID | Task | Start | Finish | Duration | Complete | Total float | Predecessors | Other |
| --- | --- | --- | --- | --- | --- | --- | --- | --- |
| 1 | **Mensajes Afore** |  | 2008-01-31 19:00 → 2008-02-06 19:00 (+6d) | 27.06d? → 31.06d? | 83% → 91% |  |  |  |
| 15 | A1 - Elaborar la preestimación en base a los casos de uso identificados |  |  |  |  |  |  | resources 90473663 - Ivan Rivera Montoya [8.33%] → 90473663 - Ivan Rivera Montoya [8.3%] |
| 18 | A1 - Elaborar la ERS para el proyecto CapturarAbono a detalle |  |  |  |  |  |  | resources 91808821 - Jesus Alvaro Lazcano Guzman [6.25%] → 91808821 - Jesus Alvaro Lazcano Guzman [6.2%] |
| 20 | A1 -Modificar CU-0001-RealizarAbono |  |  |  |  |  |  | resources 91808821 - Jesus Alvaro Lazcano Guzman [6.25%] → 91808821 - Jesus Alvaro Lazcano Guzman [6.2%] |
| 21 | A2 - Elaborar CU-0008-MostrarMensajesAfore |  |  |  |  |  |  | resources 91808821 - Jesus Alvaro Lazcano Guzman [18.75%] → 91808821 - Jesus Alvaro Lazcano Guzman [18.8%] |
| 23 | A1 - Modificar interfaz prototipo 0001-CapturarAbono |  |  |  |  |  |  | resources 91808821 - Jesus Alvaro Lazcano Guzman [1.25%] → 91808821 - Jesus Alvaro Lazcano Guzman [1.2%] |
| 25 | A1 - Realizar aceptación de la ERS por el Líder de Proyecto y Equipo de Proyecto. |  |  |  |  |  |  | resources 91808821 - Jesus Alvaro Lazcano Guzman [1.25%]; 92338488 - Morgan Omar Gonzalez Escalante [1.25%]; 90473663 - Ivan Rivera Montoya [1.25%]; 90865707 - Fanny Judith Corral Valdetano [1.25%] → 91808821 - Jesus Alvaro Lazcano Guzman [1.2%]; 92338488 - Morgan Omar Gonzalez Escalante [1.2%]; 90473663 - Ivan Rivera Montoya [1.2%]; 90865707 - Fanny Judith Corral Valdetano [1.2%] |
| 27 | A1 - Realizar Revisión de Requerimientos por Q/A |  |  |  |  |  |  | resources 92338488 - Morgan Omar Gonzalez Escalante [6.25%] → 92338488 - Morgan Omar Gonzalez Escalante [6.2%] |
| 31 | A1 - Validar ERS por Cliente |  |  |  |  |  |  | resources 90473663 - Ivan Rivera Montoya [6.25%] → 90473663 - Ivan Rivera Montoya [6.2%] |
| 39 | A1 - Diseñar Base de Datos |  |  |  |  |  |  | resources 91808821 - Jesus Alvaro Lazcano Guzman [1.25%] → 91808821 - Jesus Alvaro Lazcano Guzman [1.2%] |
| 44 | A1 - Asignación de recursos para el proyecto por Gerente |  |  |  |  |  |  | resources 90473663 - Ivan Rivera Montoya [3.75%] → 90473663 - Ivan Rivera Montoya [3.8%] |
| 50 | A1 - Realizar la identificación de riesgos con el Gerente, Equipo de Proyecto, y Líder de Proyecto |  |  |  |  |  |  | resources 90473663 - Ivan Rivera Montoya [1.25%]; 91808821 - Jesus Alvaro Lazcano Guzman [1.25%]; 92338488 - Morgan Omar Gonzalez Escalante [1.25%]; 90430191 - Juan Ruben Aldecoa Inda [1.25%]; 90865707 - Fanny Judith Corral Valdetano [1.25%] → 90473663 - Ivan Rivera Montoya [1.2%]; 91808821 - Jesus Alvaro Lazcano Guzman [1.2%]; 92338488 - Morgan Omar Gonzalez Escalante [1.2%]; 90430191 - Juan Ruben Aldecoa Inda [1.2%]; 90865707 - Fanny Judith Corral Valdetano [1.2%] |
| 58 | A1 - Identificar el Plan de Administración de Configuración |  |  |  |  |  |  | resources 90473663 - Ivan Rivera Montoya [6.25%] → 90473663 - Ivan Rivera Montoya [6.2%] |
| 60 | A1 - Elaborar plan de pruebas de proyecto |  |  |  |  |  |  | resources 90865707 - Fanny Judith Corral Valdetano [9.38%] → 90865707 - Fanny Judith Corral Valdetano [9.4%] |
| 62 | A1 - Identificar las Métricas del Proyecto |  |  |  |  |  |  | resources 90473663 - Ivan Rivera Montoya [1.25%] → 90473663 - Ivan Rivera Montoya [1.2%] |
| 64 | A1 - Realizar aceptación de compromisos sobre los planes por el Gerente y Equipo de Proyecto |  |  |  |  |  |  | resources 90473663 - Ivan Rivera Montoya [1.56%]; 91808821 - Jesus Alvaro Lazcano Guzman [1.56%]; 92338488 - Morgan Omar Gonzalez Escalante [1.56%]; 90865707 - Fanny Judith Corral Valdetano [1.56%] → 90473663 - Ivan Rivera Montoya [1.6%]; 91808821 - Jesus Alvaro Lazcano Guzman [1.6%]; 92338488 - Morgan Omar Gonzalez Escalante [1.6%]; 90865707 - Fanny Judith Corral Valdetano [1.6%] |
| 68 | A1 - Realizar aprobación del Plan de Aceptación de Producto por el cliente |  |  |  |  |  |  | resources 90473663 - Ivan Rivera Montoya [6.25%] → 90473663 - Ivan Rivera Montoya [6.2%] |
| 72 | A1 - Realizar monitoreo con el Equipo de Proyecto |  |  |  |  |  |  | resources 90473663 - Ivan Rivera Montoya [1.14%]; 91808821 - Jesus Alvaro Lazcano Guzman [1.14%]; 92338488 - Morgan Omar Gonzalez Escalante [1.14%]; 90865707 - Fanny Judith Corral Valdetano [1.14%] → 90473663 - Ivan Rivera Montoya [1.1%]; 91808821 - Jesus Alvaro Lazcano Guzman [1.1%]; 92338488 - Morgan Omar Gonzalez Escalante [1.1%]; 90865707 - Fanny Judith Corral Valdetano [1.1%] |
| 76 | A1 - Preparar el cierre de ciclo de vida del proyecto |  |  |  |  |  |  | resources 90473663 - Ivan Rivera Montoya [6.25%] → 90473663 - Ivan Rivera Montoya [6.2%] |
| 79 | **WF_Medición y Analisis** | 2008-01-04 18:30 A → 2008-01-14 08:30 A (+10d) | 2008-01-21 19:00 A → 2008-01-30 19:00 A (+9d) | 17.06d → 17d |  |  |  |  |
| 80 | **TA-Recoletar Métricas de Proyecto** | 2008-01-04 18:30 A → 2008-01-14 08:30 A (+10d) | 2008-01-21 18:30 A → 2008-01-30 19:00 A (+9d) |  |  |  |  |  |
| 81 | A1 - Recolectar métricas de proyecto | 2008-01-04 18:30 A → 2008-01-14 08:30 A (+10d) | 2008-01-21 18:30 A → 2008-01-30 19:00 A (+9d) |  |  |  |  | resources 90473663 - Ivan Rivera Montoya [2.27%] → 90473663 - Ivan Rivera Montoya [2.3%] |
| 83 | A1 - Recolectar métricas de calidad |  |  |  |  |  |  | resources 92338488 - Morgan Omar Gonzalez Escalante [2.08%]; 90473663 - Ivan Rivera Montoya [2.08%] → 92338488 - Morgan Omar Gonzalez Escalante [2.1%]; 90473663 - Ivan Rivera Montoya [2.1%] |
| 86 | A1 - Crear repositorios de proyecto |  |  |  |  |  |  | resources 90473663 - Ivan Rivera Montoya [1.25%] → 90473663 - Ivan Rivera Montoya [1.2%] |
| 88 | A1 - Elaborar reporte de estado de ítems de configuración |  |  |  |  |  |  | resources 91808821 - Jesus Alvaro Lazcano Guzman [2.27%] → 91808821 - Jesus Alvaro Lazcano Guzman [2.3%] |
| 93 | **WF_Codificación** |  | 2008-01-18 19:00 A |  | 67% → 100% | 13d → none | none → 31 |  |
| 95 | A1 - ERS-CapturarAbono - Codificar CU-0001-RealizarAbono |  |  |  |  |  |  | resources 91808821 - Jesus Alvaro Lazcano Guzman [3.75%] → 91808821 - Jesus Alvaro Lazcano Guzman [3.8%] |
| 96 | A2 - ERS-CapturarAbono - Codificar CU-0008-MostrarMensajesAfore |  |  |  |  |  | none → 95 | resources 91808821 - Jesus Alvaro Lazcano Guzman [16.88%] → 91808821 - Jesus Alvaro Lazcano Guzman [16.9%] |
| 97 | C1 - ERS-CapturarAbono - Codificar CU-0001-RealizarAbono |  |  |  |  |  |  | resources 91808821 - Jesus Alvaro Lazcano Guzman [3.12%] → 91808821 - Jesus Alvaro Lazcano Guzman [3.1%] |
| 98 | C1 - ERS-CapturarAbono - Codificar CU-0008-MostrarMensajesAfore |  |  |  |  |  |  | resources 91808821 - Jesus Alvaro Lazcano Guzman [3.12%] → 91808821 - Jesus Alvaro Lazcano Guzman [3.1%] |
| 99 | **TA-Integración** | 2008-01-16 09:00 A | 2008-01-18 19:00 A |  | 0% → 100% | 13d → none |  |  |
| 100 | A1 - Realizar integración de codigo para revisión | 2008-01-16 09:00 A | 2008-01-17 19:00 A |  | 0% → 100% | 14d → none |  | resources 91808821 - Jesus Alvaro Lazcano Guzman [0.62%] → 91808821 - Jesus Alvaro Lazcano Guzman [0.6%] |
| 101 | A2 - Realizar integración de codigo para revisión | 2008-01-17 09:00 A | 2008-01-18 19:00 A |  | 0% → 100% | 13d → none |  | resources 91808821 - Jesus Alvaro Lazcano Guzman [0.62%] → 91808821 - Jesus Alvaro Lazcano Guzman [0.6%] |
| 102 | **WF_Pruebas** | 2008-01-24 08:30 A → 2008-01-25 08:30 A (+1d) | 2008-01-26 19:00 → 2008-01-29 19:00 (+3d) | 3d → 5d | 29% → 93% | 5d → 6d |  |  |
| 103 | **TA-Diseñar Casos de Prueba** | 2008-01-24 08:30 A → 2008-01-25 08:30 A (+1d) | 2008-01-25 19:00 A → 2008-01-26 19:00 A (+1d) |  |  |  |  |  |
| 104 | A1 - ERS-CapturarAbono - Diseñar CP-0001-RealizarAbono | 2008-01-24 08:30 A → 2008-01-25 08:30 A (+1d) | 2008-01-25 19:00 A → 2008-01-26 19:00 A (+1d) |  |  |  |  | resources 90865707 - Fanny Judith Corral Valdetano [18.75%] → 90865707 - Fanny Judith Corral Valdetano [18.8%] |
| 105 | A1 - ERS CapturarAbono - Diseñar CP-0008-MostrarMensajesAfore | 2008-01-24 08:30 A → 2008-01-25 08:30 A (+1d) | 2008-01-25 19:00 A → 2008-01-26 19:00 A (+1d) |  |  |  |  | resources 90865707 - Fanny Judith Corral Valdetano [18.75%] → 90865707 - Fanny Judith Corral Valdetano [18.8%] |
| 106 | **TA-Realizar Pruebas de Sistemas** | 2008-01-25 09:00 → 2008-01-28 09:00 A (+3d) | 2008-01-26 19:00 → 2008-01-29 19:00 A (+3d) |  | 0% → 100% | 5d → none |  |  |
| 107 | A1 - ERS-CapturarAbono - Probar CP-0001-RealizarAbono | 2008-01-25 09:00 → 2008-01-28 09:00 A (+3d) | 2008-01-26 19:00 → 2008-01-29 19:00 A (+3d) |  | 0% → 100% | 5d → none |  | constraint start no earlier than 2008-01-25 08:30 → start no earlier than 2008-01-28 08:30 |
| 108 | A2 - ERS-CapturarAbono - Probar CP-0008-MostrarMensajesAfore | 2008-01-25 09:00 → 2008-01-28 09:00 A (+3d) | 2008-01-26 19:00 → 2008-01-29 19:00 A (+3d) |  | 0% → 100% | 5d → none | none → 107 | constraint start no earlier than 2008-01-25 08:30 → start no earlier than 2008-01-28 08:30 |
| 109 | C1 - ERS-CapturarAbono - Probar CP-0001-RealizarAbono | 2008-01-25 09:00 → 2008-01-28 09:00 A (+3d) | 2008-01-26 19:00 → 2008-01-29 19:00 A (+3d) |  | 0% → 100% | 5d → none |  | constraint start no earlier than 2008-01-25 08:30 → start no earlier than 2008-01-28 08:30 |
| 110 | C1 - ERS-CapturarAbono - Probar CP-0008-MostrarMensajesAfore | 2008-01-25 09:00 → 2008-01-28 09:00 A (+3d) | 2008-01-26 19:00 → 2008-01-29 19:00 A (+3d) |  | 0% → 100% | 5d → none |  | constraint start no earlier than 2008-01-25 08:30 → start no earlier than 2008-01-28 08:30 |
| 111 | **TA-Realizar Seguimiento de Defectos** | 2008-01-25 09:00 A |  |  | 0% → 50% | 5d → 9d |  |  |
| 112 | A1 - Realizar seguimiento de defectos | 2008-01-25 09:00 A |  |  | 0% → 50% | 5d → 9d |  |  |
| 113 | **WF_Q/A** |  |  |  |  | 5d → 9d | none → 2 |  |
| 115 | A1 - Realizar auditoria del proyecto |  |  |  |  | 5d → 9d |  | resources 92338488 - Morgan Omar Gonzalez Escalante [18.75%] → 92338488 - Morgan Omar Gonzalez Escalante [15.6%] |
| 117 | A1 - Realizar seguimiento de desviaciones |  |  |  |  | 5d → 9d |  | resources 92338488 - Morgan Omar Gonzalez Escalante [6.25%] → 92338488 - Morgan Omar Gonzalez Escalante [6.2%] |
| 118 | **WF_Instalación** | 2008-01-31 09:00 A | 2008-01-31 19:00 → 2008-02-06 19:00 (+6d) | 1d → 5d | 0% → 33% |  |  |  |
| 119 | **TA-Aprobación de Versión de Sistema** | 2008-01-31 09:00 → 2008-02-05 09:00 (+5d) | 2008-01-31 19:00 → 2008-02-05 19:00 (+5d) |  |  | 0d → 1d |  |  |
| 120 | A1 - Probar Sistema | 2008-01-31 09:00 → 2008-02-05 09:00 (+5d) | 2008-01-31 19:00 → 2008-02-05 19:00 (+5d) |  |  | 0d → 1d |  | constraint start no earlier than 2008-01-31 08:30 → start no earlier than 2008-02-05 08:30; resources 90473663 - Ivan Rivera Montoya [6.25%] → 90473663 - Ivan Rivera Montoya [6.2%] |
| 121 | **TA-Instalar y Configurar Versión del Sistema** | 2008-01-31 09:00 A | 2008-01-31 19:00 → 2008-02-06 19:00 (+6d) | 1d → 5d | 0% → 50% |  |  |  |
| 123 | A1 - Instalar y configurar la versión del sistema en Galaxia | 2008-01-31 09:00 → 2008-02-06 09:00 (+6d) | 2008-01-31 19:00 → 2008-02-06 19:00 (+6d) |  |  |  |  | was named A1 - Instalar y configurar la versión del sistema; constraint start no earlier than 2008-01-31 08:30 → start no earlier than 2008-02-06 08:30; resources none → 90473663 - Ivan Rivera Montoya [12.5%] |
