# For-WBS

How a schedule from MS Project XML changed from version to version. A marks actual dates.

## Version 1 (data date 2007-12-07, saved 2008-01-25, file PeriodicoCoppel.xml)

Note of the change: Primer commit

| ID | WBS | Task | Duration | Start | Finish | Predecessors | Complete | Total float | Constraint |
| --- | --- | --- | --- | --- | --- | --- | --- | --- | --- |
| 1 | 1 | **Periodico Coppel** | 28d? | 2008-01-08 09:00 A | 2008-02-06 19:00 |  | 14% | 0d |  |
| 2 | 1.1 | **WF_Recepción de Petición** | 1d? | 2008-01-23 08:30 A | 2008-01-23 19:00 |  | 67% | 3d |  |
| 3 | 1.1.1 | **TA-Elaborar el Documento de Aceptación de Petición** | 1d? | 2008-01-23 08:30 A | 2008-01-23 19:00 A |  | 100% |  |  |
| 4 |  | A1 - Elaborar el documento de aceptación de petición por el Gerente | 8h? | 2008-01-23 08:30 A | 2008-01-23 19:00 A |  | 100% |  | start no earlier than 2007-12-07 08:30 |
| 5 | 1.1.2 | **TA-Elaborar el Documento de Arquitectura (solo si el proyecto es nuevo)** | 1d? | 2008-01-23 08:30 A | 2008-01-23 19:00 A |  | 100% |  |  |
| 6 |  | A1 - Elaborar el documento de Arquitectura por el Gerente | 8h? | 2008-01-23 08:30 A | 2008-01-23 19:00 A |  | 100% |  | start no earlier than 2007-12-07 08:30 |
| 7 | 1.1.3 | **TA-Asignar Petición a Líder de Proyecto** | 1d? | 2008-01-23 09:00 | 2008-01-23 19:00 |  |  | 2d |  |
| 8 |  | A1 - Asignar Petición 730 al Líder de Proyecto por el Gerente | 8h? | 2008-01-23 09:00 | 2008-01-23 19:00 |  |  | 2d | start no earlier than 2008-01-23 08:30 |
| 9 | 1.2 | **WF_Administracion de Requerimientos** | 8d? | 2008-01-23 08:30 A | 2008-01-30 19:00 |  | 33% | 5d |  |
| 10 | 1.2.1 | **TA-Iniciar el Proceso de Elicitación** | 1d? | 2008-01-23 08:30 A | 2008-01-23 19:00 A |  | 100% |  |  |
| 11 |  | A1 - Realizar reunión con el cliente para ver detalles de los requerimientos | 8h? | 2008-01-23 08:30 A | 2008-01-23 19:00 A |  | 100% |  | finish no earlier than 2007-11-20 18:30 |
| 12 | 1.2.2 | **TA-Elaborar la ERS a Menor Detalle** | 1d? | 2008-01-24 09:00 A | 2008-01-24 19:00 A |  | 100% |  |  |
| 13 |  | A1 - Elaborar la ERS para el proyecto CapturarAbono a menor detalle | 8h? | 2008-01-24 09:00 A | 2008-01-24 19:00 A |  | 100% |  | start no earlier than 2007-11-20 08:30 |
| 14 | 1.2.3 | **Realizar Pre-Estimación e Identificación de Riesgos** | 8d? | 2008-01-23 09:00 A | 2008-01-30 19:00 |  | 11% | 5d |  |
| 15 |  | A1 - Elaborar la preestimación en base a los casos de uso identificados | 64h | 2008-01-23 09:00 | 2008-01-30 19:00 |  |  | 5d | start no earlier than 2008-01-23 08:30 |
| 16 |  | A1 - Realizar la identificación de riesgos con el Gerente, Líder de Proyecto | 8h? | 2008-01-24 08:30 A | 2008-01-24 19:00 A |  | 100% |  | start no earlier than 2007-11-24 08:30 |
| 17 | 1.2.4 | **TA-Elaborar ERS a Detalle** | 1d? | 2008-01-24 08:30 A | 2008-01-24 19:00 A |  | 100% |  |  |
| 18 |  | A1 - Elaborar la ERS para el proyecto CapturarAbono a detalle | 8h? | 2008-01-24 08:30 A | 2008-01-24 19:00 A |  | 100% |  | start no earlier than 2007-11-24 08:30 |
| 19 | 1.2.5 | **TA-Realizar Modelo de Casos de Uso** | 1d? | 2008-01-24 08:30 A | 2008-01-24 19:00 A |  | 100% |  |  |
| 20 |  | A1 -Modificar CU-0007-RealizarEncuesta | 8h? | 2008-01-24 08:30 A | 2008-01-24 19:00 A |  | 100% |  | start no earlier than 2007-11-26 08:30 |
| 21 | 1.2.6 | **TA-Realizar de Interfaz de Usuario Prototipo(Si Aplica)** | 1d? | 2008-01-24 08:30 A | 2008-01-24 19:00 A |  | 100% |  |  |
| 22 |  | A1 - Modificar interfaz prototipo 0001-CapturarAbono | 8h? | 2008-01-24 08:30 A | 2008-01-24 19:00 A |  | 100% |  | start no earlier than 2007-12-05 08:30 |
| 23 | 1.2.7 | **TA-Realizar Aceptación de la ERS por Líder de Proyecto y Equipo de Proyecto.** | 1d? | 2008-01-28 08:30 A | 2008-01-28 19:00 A | 17 | 100% |  |  |
| 24 |  | A1 - Realizar aceptación de la ERS por el Líder de Proyecto y Equipo de Proyecto. | 8h? | 2008-01-28 08:30 A | 2008-01-28 19:00 A |  | 100% |  |  |
| 25 | 1.2.8 | **TA-Realizar Revisión de Requerimientos por Q/A** | 3d? | 2008-01-26 09:00 | 2008-01-28 19:00 | 17 |  | 7d |  |
| 26 |  | A1 - Realizar Revisión de Requerimientos por Q/A | 24h? | 2008-01-26 09:00 | 2008-01-28 19:00 |  |  | 7d | start no earlier than 2008-01-26 08:30 |
| 27 | 1.2.9 | **TA-Realizar Revisión de Requerimientos por Gerente** | 2d | 2008-01-24 08:30 A | 2008-01-25 19:00 A |  | 100% |  |  |
| 28 |  | A1 - Realizar Revisión de Requerimientos por Gerente | 16h | 2008-01-24 08:30 A | 2008-01-25 19:00 A |  | 100% |  | start no earlier than 2007-12-23 08:30 |
| 29 | 1.2.10 | **TA-Validar Especificación de Requerimientos por Cliente** | 3d | 2008-01-26 09:00 | 2008-01-28 19:00 |  |  | 7d |  |
| 30 |  | A1 - Validar ERS por Cliente | 24h | 2008-01-26 09:00 | 2008-01-28 19:00 |  |  | 7d | start no earlier than 2008-01-26 08:30 |
| 31 | 1.2.11 | **TA-Elaborar matriz de rastreabilidad** | 3d? | 2008-01-26 09:00 | 2008-01-28 19:00 |  |  | 7d |  |
| 32 |  | A1 - Elaborar matriz de rastreabilidad de Documentacion | 24h? | 2008-01-26 09:00 | 2008-01-28 19:00 |  |  | 7d | start no earlier than 2008-01-26 08:30 |
| 33 |  | A2 - Elaborar matriz de rastreabilidad de Código | 24h? | 2008-01-26 09:00 | 2008-01-28 19:00 |  |  | 7d | start no earlier than 2008-01-26 08:30 |
| 34 | 1.2.12 | **TA-Actualizar Documento de Arquitectura** | 1d? | 2008-01-24 08:30 A | 2008-01-24 19:00 A |  | 100% |  |  |
| 35 |  | A1 - Actualizar documento de arquitectura | 8h? | 2008-01-24 08:30 A | 2008-01-24 19:00 A |  | 100% |  | start no earlier than 2007-12-07 08:30 |
| 36 | 1.3 | **WF_Diseño** | 3d? | 2008-01-26 09:00 | 2008-01-28 19:00 |  |  | 7d |  |
| 37 | 1.3.1 | **TA-Diseñar Base de Datos** | 3d? | 2008-01-26 09:00 | 2008-01-28 19:00 |  |  | 7d |  |
| 38 |  | A1 - Diseñar Base de Datos | 24h? | 2008-01-26 09:00 | 2008-01-28 19:00 |  |  | 7d | start no earlier than 2008-01-26 08:30 |
| 39 | 1.3.2 | **TA-Diseñar Pantallas** | 3d? | 2008-01-26 09:00 | 2008-01-28 19:00 |  |  | 7d |  |
| 40 |  | A1 - Diseñar interfaz 0001-CapturarAbono | 24h? | 2008-01-26 09:00 | 2008-01-28 19:00 |  |  | 7d | start no earlier than 2008-01-26 08:30 |
| 41 | 1.4 | **WF_Planificación** | 7d? | 2008-01-23 09:00 A | 2008-01-29 19:00 |  | 32% | 6d |  |
| 42 | 1.4.1 | **TA-Asignar Recursos al Gerente** | 1d? | 2008-01-23 09:00 A | 2008-01-23 19:00 A |  | 100% |  |  |
| 43 |  | A1 - Asignación de recursos para el proyecto por Gerente | 8h? | 2008-01-23 09:00 A | 2008-01-23 19:00 A |  | 100% |  | start no earlier than 2008-01-23 08:30 |
| 44 | 1.4.2 | **TA-Elaborar el Plan de Desarrollo de Software** | 1d? | 2008-01-25 08:30 A | 2008-01-25 19:00 A |  | 100% |  |  |
| 45 |  | A1 - Elaborar el plan de desarrollo del proyecto CapturarAbono | 8h? | 2008-01-25 08:30 A | 2008-01-25 19:00 A |  | 100% |  | start no earlier than 2007-12-01 08:30 |
| 46 | 1.4.3 | **TA-Realizar Estimaciones** | 2d | 2008-01-24 09:00 | 2008-01-25 19:00 |  |  | 10d |  |
| 47 |  | A1 - Realizar estimación del proyecto | 16h | 2008-01-24 09:00 | 2008-01-25 19:00 |  |  | 10d | start no earlier than 2008-01-24 08:30 |
| 48 | 1.4.4 | **TA-Identificar y Evaluar Riesgos** | 1d? | 2008-01-24 08:30 A | 2008-01-24 19:00 A |  | 100% |  |  |
| 49 |  | A1 - Realizar la identificación de riesgos con el Gerente, Equipo de Proyecto, y Líder de Proyecto | 8h? | 2008-01-24 08:30 A | 2008-01-24 19:00 A |  | 100% |  | start no earlier than 2007-12-04 08:30 |
| 50 | 1.4.5 | **TA-Elaborar Plan Iterativo (Si Aplica)** | 1d? | 2008-01-24 09:00 | 2008-01-24 19:00 |  |  | 11d |  |
| 51 |  | A1 - Elaborar el plan iterativo (Si Aplica) | 8h? | 2008-01-24 09:00 | 2008-01-24 19:00 |  |  | 11d | start no earlier than 2008-01-24 08:30 |
| 52 | 1.4.6 | **TA-Elaborar Plan de Aceptación de Producto** | 1d? | 2008-01-25 08:30 A | 2008-01-25 19:00 A |  | 100% |  |  |
| 53 |  | A1 - Elaborar plan de aceptación de producto | 8h? | 2008-01-25 08:30 A | 2008-01-25 19:00 A |  | 100% |  | start no earlier than 2007-12-07 08:30 |
| 54 | 1.4.7 | **TA-Identificar el Plan de Calidad del proyecto incorporado en el Plan de Desarrollo de SW.** | 1d? | 2008-01-24 08:30 A | 2008-01-24 19:00 A |  | 100% |  |  |
| 55 |  | A1 -Identificar el Plan de Calidad del proyecto | 8h? | 2008-01-24 08:30 A | 2008-01-24 19:00 A |  | 100% |  | start no earlier than 2007-12-07 08:30 |
| 56 | 1.4.8 | **TA-Identificar el Plan de Administración de Configuración incorporado en el Plan de Desarrollo de SW.** | 1d? | 2008-01-24 09:00 | 2008-01-24 19:00 |  |  | 11d |  |
| 57 |  | A1 - Identificar el Plan de Administración de Configuración | 8h? | 2008-01-24 09:00 | 2008-01-24 19:00 |  |  | 11d | start no earlier than 2008-01-24 08:30 |
| 58 | 1.4.9 | **TA-Elaborar Plan de Pruebas del Proyecto** | 2d | 2008-01-28 09:00 | 2008-01-29 19:00 |  |  | 6d |  |
| 59 |  | A1 - Elaborar plan de pruebas de proyecto | 16h | 2008-01-28 09:00 | 2008-01-29 19:00 |  |  | 6d | start no earlier than 2008-01-28 08:30 |
| 60 | 1.4.10 | **TA-Identificar las Metricas del Proyecto** | 1d? | 2008-01-24 08:30 A | 2008-01-24 19:00 A |  | 100% |  |  |
| 61 |  | A1 - Identificar las Métricas del Proyecto | 8h? | 2008-01-24 08:30 A | 2008-01-24 19:00 A |  | 100% |  | start no earlier than 2007-12-07 08:30 |
| 62 | 1.4.11 | **TA-Aceptar Compromisos Sobre los Planes Gerente y Equipo de Proyecto** | 3d? | 2008-01-26 09:00 | 2008-01-28 19:00 | 44 |  | 6d |  |
| 63 |  | A1 - Realizar aceptación de compromisos sobre los planes por el Gerente y Equipo de Proyecto | 24h? | 2008-01-26 09:00 | 2008-01-28 19:00 |  |  | 6d | start no earlier than 2007-12-07 08:30 |
| 64 | 1.4.12 | **TA-Realizar Revisión de los Planes por Q/A** | 3d? | 2008-01-26 09:00 | 2008-01-28 19:00 | 44 |  | 6d |  |
| 65 |  | A1 - Realizar la revisión de los planes por Q/A Pendiente | 24h? | 2008-01-26 09:00 | 2008-01-28 19:00 |  |  | 6d | start no earlier than 2008-01-26 08:30 |
| 66 | 1.4.13 | **TA-Aprobar Plan de Aceptación de Producto por Cliente** | 1d | 2008-01-29 09:00 | 2008-01-29 19:00 | 62, 64 |  | 6d |  |
| 67 |  | A1 - Realizar aprobación del Plan de Aceptación de Producto por el cliente | 8h | 2008-01-29 09:00 | 2008-01-29 19:00 |  |  | 6d | start no earlier than 2008-01-28 08:30 |
| 68 | 1.5 | **WF_Monitoreo y Control** | 9d | 2008-01-24 09:00 | 2008-02-01 19:00 | 2 |  | 3d |  |
| 69 | 1.5.1 | **TA-Monitorear y Reportar el Estado del Proyecto** | 9d | 2008-01-24 09:00 | 2008-02-01 19:00 |  |  | 3d |  |
| 70 | 1.5.1.1 | **Realizar Monitoreo con el Equipo de Proyecto** | 9d | 2008-01-24 09:00 | 2008-02-01 19:00 |  |  | 3d |  |

| ID | WBS | Task | Duration | Start | Finish | Predecessors | Total float | Constraint |
| --- | --- | --- | --- | --- | --- | --- | --- | --- |
| 71 |  | A1 - Realizar monitoreo con el Equipo de Proyecto | 72h | 2008-01-24 09:00 | 2008-02-01 19:00 |  | 3d | start no earlier than 2008-01-23 08:30 |
| 72 | 1.5.1.2 | **Realizar Monitoreo con la Gerencia** | 9d | 2008-01-24 09:00 | 2008-02-01 19:00 |  | 3d |  |
| 73 |  | A1 - Realizar monitoreo con la gerencia | 72h | 2008-01-24 09:00 | 2008-02-01 19:00 |  | 3d | start no earlier than 2007-12-15 08:30 |
| 74 | 1.5.2 | **TA-Preparar el Cierre de Ciclo de Vida del Proyecto** | 2d | 2008-01-30 09:00 | 2008-01-31 19:00 |  | 4d |  |
| 75 |  | A1 - Preparar el cierre de ciclo de vida del proyecto | 16h | 2008-01-30 09:00 | 2008-01-31 19:00 |  | 4d | start no earlier than 2008-01-30 08:30 |
| 76 | 1.5.3 | **TA-Realizar la Evaluación del Cierre de Ciclo de Vida / Proyecto** | 2d | 2008-01-30 09:00 | 2008-01-31 19:00 |  | 4d |  |
| 77 |  | A1 - Realizar la evaluación del cierre de ciclo de vida / proyecto | 16h | 2008-01-30 09:00 | 2008-01-31 19:00 |  | 4d | start no earlier than 2008-01-30 08:30 |
| 78 | 1.6 | **WF_Medición y Analisis** | 9d | 2008-01-24 09:00 | 2008-02-01 19:00 | 2 | 3d |  |
| 79 | 1.6.1 | **TA-Recoletar Métricas de Proyecto** | 9d | 2008-01-24 09:00 | 2008-02-01 19:00 |  | 3d |  |
| 80 |  | A1 - Recolectar métricas de proyecto | 72h | 2008-01-24 09:00 | 2008-02-01 19:00 |  | 3d |  |
| 81 | 1.6.2 | **TA-Recolectar Métricas de Calidad** | 7d | 2008-01-24 09:00 | 2008-01-30 19:00 |  | 5d |  |
| 82 |  | A1 - Recolectar métricas de calidad | 56h | 2008-01-24 09:00 | 2008-01-30 19:00 |  | 5d |  |
| 83 | 1.7 | **WF_Administración de Configuración** | 9d? | 2008-01-24 09:00 | 2008-02-01 19:00 | 2 | 3d |  |
| 84 | 1.7.1 | **TA-Crear Repositorios del Proyecto** | 1d? | 2008-01-25 09:00 | 2008-01-25 19:00 |  | 10d |  |
| 85 |  | A1 - Crear repositorios de proyecto | 8h? | 2008-01-25 09:00 | 2008-01-25 19:00 |  | 10d | start no earlier than 2008-01-25 08:30 |
| 86 | 1.7.2 | **TA-Elaborar Reportes de Estado de Items de Configuración** | 9d | 2008-01-24 09:00 | 2008-02-01 19:00 |  | 3d |  |
| 87 |  | A1 - Elaborar reporte de estado de ítems de configuración | 72h | 2008-01-24 09:00 | 2008-02-01 19:00 |  | 3d |  |
| 88 | 1.7.3 | **TA-Realizar las Auditorías de Configuración Física** | 2d | 2008-01-28 09:00 | 2008-01-29 19:00 |  | 6d |  |
| 89 |  | A1 - Realizar las auditorías de configuración física | 16h | 2008-01-28 09:00 | 2008-01-29 19:00 |  | 6d | start no earlier than 2008-01-28 08:30 |
| 90 | 1.7.4 | **TA-Realizar las Auditorías de Configuración Funcional** | 2d | 2008-01-30 09:00 | 2008-01-31 19:00 |  | 4d |  |
| 91 |  | A1 - Realizar auditorias de configuración funcional | 16h | 2008-01-30 09:00 | 2008-01-31 19:00 |  | 4d | start no earlier than 2008-01-30 08:30 |
| 92 | 1.8 | **WF_Codificación** | 4d | 2008-01-25 08:30 | 2008-01-28 19:00 |  | 6d |  |
| 93 | 1.8.1 | **TA-Realizar Codificación** | 4d | 2008-01-25 08:30 | 2008-01-28 19:00 |  | 6d |  |
| 94 |  | A1 - ERS-CapturarAbono - Modificar CU-0007-RealizarEncuesta | 16h | 2008-01-25 08:30 | 2008-01-26 19:00 |  | 8d | start no earlier than 2008-01-25 08:30 |
| 95 |  | C1 - ERS-CapturarAbono - Modificar CU-0007-RealizarEncuesta | 8h | 2008-01-28 09:00 | 2008-01-28 19:00 |  | 6d | start no earlier than 2008-01-28 08:30 |
| 96 | 1.8.2 | **TA-Integración** | 1d | 2008-01-28 09:00 | 2008-01-28 19:00 |  | 6d |  |
| 97 |  | A1 - Realizar integración de codigo para revisión | 8h | 2008-01-28 09:00 | 2008-01-28 19:00 |  | 6d | start no earlier than 2008-01-28 08:30 |
| 98 | 1.9 | **WF_Pruebas** | 22d? | 2008-01-08 09:00 | 2008-01-29 19:00 |  | 5d |  |
| 99 | 1.9.1 | **TA-Diseñar Casos de Prueba** | 2d | 2008-01-28 09:00 | 2008-01-29 19:00 |  | 5d |  |
| 100 |  | A1 - ERS-CapturarAbono - Diseñar CP-0007-RealizarEncuesta | 16h | 2008-01-28 09:00 | 2008-01-29 19:00 |  | 5d | start no earlier than 2008-01-28 08:30 |
| 101 | 1.9.2 | **TA-Realizar Pruebas de Sistemas** | 2d | 2008-01-28 09:00 | 2008-01-29 19:00 |  | 5d |  |
| 102 |  | A1 - ERS-CapturarAbono - Probar CP-0007-RealizarEncuesta | 16h | 2008-01-28 09:00 | 2008-01-29 19:00 |  | 5d | start no earlier than 2008-01-28 08:30 |
| 103 |  | C1 - ERS-CapturarAbono - Probar CP-0007-RealizarEncuesta | 16h | 2008-01-28 09:00 | 2008-01-29 19:00 |  | 5d | start no earlier than 2008-01-28 08:30 |
| 104 | 1.9.3 | **TA-Realizar Seguimiento de Defectos** | 1d? | 2008-01-08 09:00 | 2008-01-08 19:00 |  | 26d |  |
| 105 |  | A1 - Realizar seguimiento de defectos | 8h? | 2008-01-08 09:00 | 2008-01-08 19:00 |  | 26d | start no earlier than 2008-01-08 08:30 |
| 106 | 1.10 | **WF_Q/A** | 3d? | 2008-01-28 09:00 | 2008-01-30 19:00 | 2 | 5d |  |
| 107 | 1.10.1 | **TA-Realizar Auditorías del Proyecto** | 1d? | 2008-01-28 09:00 | 2008-01-28 19:00 |  | 7d |  |
| 108 |  | A1 - Realizar auditoria del proyecto Pendiente | 8h? | 2008-01-28 09:00 | 2008-01-28 19:00 |  | 7d | start no earlier than 2008-01-28 08:30 |
| 109 | 1.10.2 | **TA-Realizar Seguimiento de Desviaciones** | 3d | 2008-01-28 09:00 | 2008-01-30 19:00 |  | 5d |  |
| 110 |  | A1 - Realizar seguimiento de desviaciones | 24h | 2008-01-28 09:00 | 2008-01-30 19:00 |  | 5d | start no earlier than 2008-01-28 08:30 |
| 111 | 1.11 | **WF_Instalación** | 1d? | 2008-02-06 09:00 | 2008-02-06 19:00 | 92, 98 | 0d |  |
| 112 | 1.11.1 | **TA-Aprobación de Versión de Sistema** | 1d? | 2008-02-06 09:00 | 2008-02-06 19:00 |  | 0d |  |
| 113 |  | A1 - Probar Sistema | 8h? | 2008-02-06 09:00 | 2008-02-06 19:00 |  | 0d | start no earlier than 2008-02-06 08:30 |
| 114 | 1.11.2 | **TA-Instalar y Configurar Versión del Sistema** | 1d? | 2008-02-06 09:00 | 2008-02-06 19:00 |  | 0d |  |
| 115 |  | A1 - Instalar y configurar la versión del sistema | 8h? | 2008-02-06 09:00 | 2008-02-06 19:00 |  | 0d | start no earlier than 2008-02-06 08:30 |
| 116 | 1.12 | **WF_Capacitaciones** | 1d? | 2008-01-24 09:00 | 2008-01-24 19:00 |  | 11d |  |
| 117 | 1.12.1 | **TA-Realizar Capacitaciones** | 1d? | 2008-01-24 09:00 | 2008-01-24 19:00 |  | 11d |  |
| 118 |  | Ejemplo : A1 - Capacitación de <Tema de la Capacitación> | 8h? | 2008-01-24 09:00 | 2008-01-24 19:00 |  | 11d | start no earlier than 2008-01-24 08:30 |

## Version 2 (data date 2007-12-07, saved 2008-02-11, file CRO-PeriodicoCoppel.mpp)

Note of the change: Primer commit

Last finish 2008-02-06 → 2008-02-12 (+6d). Complete tasks 17 → 41.

Changed:

| ID | Task | Start | Finish | Duration | Complete | Total float | Predecessors | Other |
| --- | --- | --- | --- | --- | --- | --- | --- | --- |
| 1 | **Periodico Coppel** | 2008-01-08 09:00 A → 2008-01-23 08:30 A (+15d) | 2008-02-06 19:00 → 2008-02-12 19:00 (+6d) | 28d? → 17d? | 14% → 82% |  |  |  |
| 2 | **WF_Recepción de Petición** |  | 2008-01-23 19:00 A |  | 67% → 100% | 3d → none |  |  |
| 4 | A1 - Elaborar el documento de aceptación de petición por el Gerente |  |  |  |  |  |  | resources 90057881-JESUS MANUEL GARCIA VILLEGAS [6.25%] → 90057881-JESUS MANUEL GARCIA VILLEGAS [6.2%] |
| 7 | **TA-Asignar Petición a Líder de Proyecto** | 2008-01-23 09:00 A | 2008-01-23 19:00 A |  | 0% → 100% | 2d → none |  |  |
| 8 | A1 - Asignar Petición 730 al Líder de Proyecto por el Gerente | 2008-01-23 09:00 A | 2008-01-23 19:00 A |  | 0% → 100% | 2d → none |  | resources 90057881-JESUS MANUEL GARCIA VILLEGAS [6.25%] → 90057881-JESUS MANUEL GARCIA VILLEGAS [6.2%] |
| 9 | **WF_Administracion de Requerimientos** |  |  |  | 33% → 73% |  |  |  |
| 14 | **Realizar Pre-Estimación e Identificación de Riesgos** |  | 2008-01-30 19:00 A |  | 11% → 100% | 5d → none |  |  |
| 15 | A1 - Elaborar la preestimación en base a los casos de uso identificados | 2008-01-23 09:00 A | 2008-01-30 19:00 A |  | 0% → 100% | 5d → none |  | resources 90473663-IVAN RIVERA MONTOYA [4.17%] → 90473663-IVAN RIVERA MONTOYA [4.2%] |
| 25 | **TA-Realizar Revisión de Requerimientos por Q/A** | 2008-01-26 09:00 → 2008-01-28 09:00 A (+2d) | 2008-01-28 19:00 → 2008-01-30 19:00 (+2d) |  | 0% → 33% | 7d → 5d |  |  |
| 26 | A1 - Realizar Revisión de Requerimientos por Q/A | 2008-01-26 09:00 → 2008-01-28 09:00 A (+2d) | 2008-01-28 19:00 → 2008-01-30 19:00 (+2d) |  | 0% → 33% | 7d → 5d |  |  |
| 28 | A1 - Realizar Revisión de Requerimientos por Gerente |  |  |  |  |  |  | resources 90057881-JESUS MANUEL GARCIA VILLEGAS [3.12%] → 90057881-JESUS MANUEL GARCIA VILLEGAS [3.1%] |
| 29 | **TA-Validar Especificación de Requerimientos por Cliente** | 2008-01-26 09:00 → 2008-01-28 09:00 A (+2d) | 2008-01-28 19:00 → 2008-01-30 19:00 (+2d) |  | 0% → 33% | 7d → 5d |  |  |
| 30 | A1 - Validar ERS por Cliente | 2008-01-26 09:00 → 2008-01-28 09:00 A (+2d) | 2008-01-28 19:00 → 2008-01-30 19:00 (+2d) |  | 0% → 33% | 7d → 5d |  |  |
| 31 | **TA-Elaborar matriz de rastreabilidad** | 2008-01-26 09:00 → 2008-01-28 09:00 A (+2d) | 2008-01-28 19:00 → 2008-01-30 19:00 (+2d) |  | 0% → 33% | 7d → 5d |  |  |
| 32 | A1 - Elaborar matriz de rastreabilidad de Documentacion | 2008-01-26 09:00 → 2008-01-28 09:00 A (+2d) | 2008-01-28 19:00 → 2008-01-30 19:00 (+2d) |  | 0% → 33% | 7d → 5d |  |  |
| 33 | A2 - Elaborar matriz de rastreabilidad de Código | 2008-01-26 09:00 → 2008-01-28 09:00 A (+2d) | 2008-01-28 19:00 → 2008-01-30 19:00 (+2d) |  | 0% → 33% | 7d → 5d |  |  |
| 36 | **WF_Diseño** | 2008-01-26 09:00 → 2008-01-28 09:00 A (+2d) | 2008-01-28 19:00 → 2008-01-30 19:00 (+2d) |  | 0% → 33% | 7d → 5d |  |  |
| 37 | **TA-Diseñar Base de Datos** | 2008-01-26 09:00 → 2008-01-28 09:00 A (+2d) | 2008-01-28 19:00 → 2008-01-30 19:00 (+2d) |  | 0% → 33% | 7d → 5d |  |  |
| 38 | A1 - Diseñar Base de Datos | 2008-01-26 09:00 → 2008-01-28 09:00 A (+2d) | 2008-01-28 19:00 → 2008-01-30 19:00 (+2d) |  | 0% → 33% | 7d → 5d |  |  |
| 39 | **TA-Diseñar Pantallas** | 2008-01-26 09:00 → 2008-01-28 09:00 A (+2d) | 2008-01-28 19:00 → 2008-01-30 19:00 (+2d) |  | 0% → 33% | 7d → 5d |  |  |
| 40 | A1 - Diseñar interfaz 0001-CapturarAbono | 2008-01-26 09:00 → 2008-01-28 09:00 A (+2d) | 2008-01-28 19:00 → 2008-01-30 19:00 (+2d) |  | 0% → 33% | 7d → 5d |  |  |
| 41 | **WF_Planificación** |  | 2008-01-29 19:00 → 2008-01-31 19:00 (+2d) | 7d? → 9d? | 32% → 77% | 6d → 4d |  |  |
| 43 | A1 - Asignación de recursos para el proyecto por Gerente |  |  |  |  |  |  | resources 90473663-IVAN RIVERA MONTOYA [3.75%] → 90473663-IVAN RIVERA MONTOYA [3.8%] |
| 46 | **TA-Realizar Estimaciones** | 2008-01-24 09:00 A | 2008-01-25 19:00 A |  | 0% → 100% | 10d → none |  |  |
| 47 | A1 - Realizar estimación del proyecto | 2008-01-24 09:00 A | 2008-01-25 19:00 A |  | 0% → 100% | 10d → none |  |  |
| 55 | A1 -Identificar el Plan de Calidad del proyecto |  |  |  |  |  |  | resources 90473663-IVAN RIVERA MONTOYA [6.25%] → 90473663-IVAN RIVERA MONTOYA [6.2%] |
| 56 | **TA-Identificar el Plan de Administración de Configuración incorporado en el Plan de Desarrollo de SW.** | 2008-01-24 09:00 A | 2008-01-24 19:00 A |  | 0% → 100% | 11d → none |  |  |
| 57 | A1 - Identificar el Plan de Administración de Configuración | 2008-01-24 09:00 A | 2008-01-24 19:00 A |  | 0% → 100% | 11d → none |  | resources 90473663-IVAN RIVERA MONTOYA [6.25%] → 90473663-IVAN RIVERA MONTOYA [6.2%] |
| 58 | **TA-Elaborar Plan de Pruebas del Proyecto** | 2008-01-28 09:00 → 2008-01-24 09:00 A (-4d) | 2008-01-29 19:00 → 2008-01-28 19:00 A (-1d) | 2d → 5d | 0% → 100% | 6d → none |  |  |
| 59 | A1 - Elaborar plan de pruebas de proyecto | 2008-01-28 09:00 → 2008-01-24 09:00 A (-4d) | 2008-01-29 19:00 → 2008-01-28 19:00 A (-1d) | 16h → 40h | 0% → 100% | 6d → none |  | constraint start no earlier than 2008-01-28 08:30 → start no earlier than 2008-01-24 08:30; resources 91576172-JOSUE RUBIO RAMIREZ [18.75%] → 91576172-JOSUE RUBIO RAMIREZ [8.3%] |
| 62 | **TA-Aceptar Compromisos Sobre los Planes Gerente y Equipo de Proyecto** | 2008-01-26 09:00 → 2008-01-28 09:00 A (+2d) | 2008-01-28 19:00 → 2008-01-30 19:00 (+2d) |  | 0% → 33% | 6d → 5d |  |  |
| 63 | A1 - Realizar aceptación de compromisos sobre los planes por el Gerente y Equipo de Proyecto | 2008-01-26 09:00 → 2008-01-28 09:00 A (+2d) | 2008-01-28 19:00 → 2008-01-30 19:00 (+2d) |  | 0% → 33% | 6d → 5d |  |  |
| 64 | **TA-Realizar Revisión de los Planes por Q/A** | 2008-01-26 09:00 → 2008-01-28 09:00 A (+2d) | 2008-01-28 19:00 → 2008-01-30 19:00 (+2d) |  | 0% → 33% | 6d → 5d |  |  |
| 65 | A1 - Realizar la revisión de los planes por Q/A | 2008-01-26 09:00 → 2008-01-28 09:00 A (+2d) | 2008-01-28 19:00 → 2008-01-30 19:00 (+2d) |  | 0% → 33% | 6d → 5d |  | was named A1 - Realizar la revisión de los planes por Q/A Pendiente |
| 66 | **TA-Aprobar Plan de Aceptación de Producto por Cliente** | 2008-01-29 09:00 → 2008-01-31 09:00 A (+2d) | 2008-01-29 19:00 → 2008-01-31 19:00 A (+2d) |  | 0% → 100% | 6d → none |  |  |
| 67 | A1 - Realizar aprobación del Plan de Aceptación de Producto por el cliente | 2008-01-29 09:00 → 2008-01-31 09:00 A (+2d) | 2008-01-29 19:00 → 2008-01-31 19:00 A (+2d) |  | 0% → 100% | 6d → none |  |  |
| 68 | **WF_Monitoreo y Control** | 2008-01-24 09:00 → 2008-01-30 09:00 A (+6d) | 2008-02-01 19:00 → 2008-01-31 19:00 A (-1d) | 9d → 2d | 0% → 100% | 3d → none | 2 → none |  |
| 69 | **TA-Monitorear y Reportar el Estado del Proyecto** | 2008-01-24 09:00 → 2008-01-30 09:00 A (+6d) | 2008-02-01 19:00 → 2008-01-31 19:00 A (-1d) | 9d → 2d | 0% → 100% | 3d → none |  |  |
| 70 | **Realizar Monitoreo con el Equipo de Proyecto** | 2008-01-24 09:00 → 2008-01-30 09:00 A (+6d) | 2008-02-01 19:00 → 2008-01-31 19:00 A (-1d) | 9d → 2d | 0% → 100% | 3d → none |  |  |
| 71 | A1 - Realizar monitoreo con el Equipo de Proyecto | 2008-01-24 09:00 → 2008-01-30 09:00 A (+6d) | 2008-02-01 19:00 → 2008-01-31 19:00 A (-1d) | 72h → 16h | 0% → 100% | 3d → none |  | constraint start no earlier than 2008-01-23 08:30 → start no earlier than 2008-01-30 08:30; resources 90473663-IVAN RIVERA MONTOYA [7.14%] → 90473663-IVAN RIVERA MONTOYA [12.5%] |
| 72 | **Realizar Monitoreo con la Gerencia** | 2008-01-24 09:00 → 2008-01-30 09:00 A (+6d) | 2008-02-01 19:00 → 2008-01-31 19:00 A (-1d) | 9d → 2d | 0% → 100% | 3d → none |  |  |
| 73 | A1 - Realizar monitoreo con la gerencia | 2008-01-24 09:00 → 2008-01-30 09:00 A (+6d) | 2008-02-01 19:00 → 2008-01-31 19:00 A (-1d) | 72h → 16h | 0% → 100% | 3d → none |  | constraint start no earlier than 2007-12-15 08:30 → start no earlier than 2008-01-30 08:30; resources 90473663-IVAN RIVERA MONTOYA [5.36%] → 90473663-IVAN RIVERA MONTOYA [12.5%] |
| 74 | **TA-Preparar el Cierre de Ciclo de Vida del Proyecto** | 2008-01-30 09:00 A | 2008-01-31 19:00 A |  | 0% → 100% | 4d → none |  |  |
| 75 | A1 - Preparar el cierre de ciclo de vida del proyecto | 2008-01-30 09:00 A | 2008-01-31 19:00 A |  | 0% → 100% | 4d → none |  | resources 90473663-IVAN RIVERA MONTOYA [6.25%] → 90473663-IVAN RIVERA MONTOYA [6.2%] |
| 76 | **TA-Realizar la Evaluación del Cierre de Ciclo de Vida / Proyecto** | 2008-01-30 09:00 A | 2008-01-31 19:00 A |  | 0% → 100% | 4d → none |  |  |
| 77 | A1 - Realizar la evaluación del cierre de ciclo de vida / proyecto | 2008-01-30 09:00 A | 2008-01-31 19:00 A |  | 0% → 100% | 4d → none |  |  |
| 78 | **WF_Medición y Analisis** | 2008-01-24 09:00 A | 2008-02-01 19:00 A |  | 0% → 100% | 3d → none |  |  |
| 79 | **TA-Recoletar Métricas de Proyecto** | 2008-01-24 09:00 A | 2008-02-01 19:00 A |  | 0% → 100% | 3d → none |  |  |
| 80 | A1 - Recolectar métricas de proyecto | 2008-01-24 09:00 A | 2008-02-01 19:00 A |  | 0% → 100% | 3d → none |  | resources 90473663-IVAN RIVERA MONTOYA [3.57%] → 90473663-IVAN RIVERA MONTOYA [3.6%] |
| 81 | **TA-Recolectar Métricas de Calidad** | 2008-01-24 09:00 A | 2008-01-30 19:00 A |  | 0% → 100% | 5d → none |  |  |
| 82 | A1 - Recolectar métricas de calidad | 2008-01-24 09:00 A | 2008-01-30 19:00 A |  | 0% → 100% | 5d → none |  | resources 92324738-GABRIELA VALDEZ MUÑOZ → 92324738-GABRIELA VALDEZ MUÑOZ [10%] |
| 83 | **WF_Administración de Configuración** | 2008-01-24 09:00 A | 2008-02-01 19:00 A |  | 0% → 100% | 3d → none |  |  |
| 84 | **TA-Crear Repositorios del Proyecto** | 2008-01-25 09:00 A | 2008-01-25 19:00 A |  | 0% → 100% | 10d → none |  |  |
| 85 | A1 - Crear repositorios de proyecto | 2008-01-25 09:00 A | 2008-01-25 19:00 A |  | 0% → 100% | 10d → none |  | resources 90473663-IVAN RIVERA MONTOYA [1.25%] → 90473663-IVAN RIVERA MONTOYA [1.2%] |
| 86 | **TA-Elaborar Reportes de Estado de Items de Configuración** | 2008-01-24 09:00 A | 2008-02-01 19:00 A |  | 0% → 100% | 3d → none |  |  |
| 87 | A1 - Elaborar reporte de estado de ítems de configuración | 2008-01-24 09:00 A | 2008-02-01 19:00 A |  | 0% → 100% | 3d → none |  | resources 91808821-JESUS ALVARO LAZCANO GUZMAN [3.57%] → 91808821-JESUS ALVARO LAZCANO GUZMAN [3.6%] |
| 88 | **TA-Realizar las Auditorías de Configuración Física** | 2008-01-28 09:00 A | 2008-01-29 19:00 A |  | 0% → 100% | 6d → none |  |  |
| 89 | A1 - Realizar las auditorías de configuración física | 2008-01-28 09:00 A | 2008-01-29 19:00 A |  | 0% → 100% | 6d → none |  |  |
| 90 | **TA-Realizar las Auditorías de Configuración Funcional** | 2008-01-30 09:00 A | 2008-01-31 19:00 A |  | 0% → 100% | 4d → none |  |  |
| 91 | A1 - Realizar auditorias de configuración funcional | 2008-01-30 09:00 A | 2008-01-31 19:00 A |  | 0% → 100% | 4d → none |  |  |
| 92 | **WF_Codificación** | 2008-01-25 08:30 → 2008-01-25 09:00 A |  |  | 0% → 75% |  | none → 30 |  |
| 93 | **TA-Realizar Codificación** | 2008-01-25 08:30 → 2008-01-25 09:00 A |  |  | 0% → 67% |  |  |  |
| 94 | A1 - ERS-CapturarAbono - Modificar CU-0007-RealizarEncuesta | 2008-01-25 08:30 → 2008-01-25 09:00 A |  |  | 0% → 50% |  |  | resources 91808821-JESUS ALVARO LAZCANO GUZMAN [20.83%] → 91808821-JESUS ALVARO LAZCANO GUZMAN [37.5%] |
| 95 | C1 - ERS-CapturarAbono - Modificar CU-0007-RealizarEncuesta | 2008-01-28 09:00 A | 2008-01-28 19:00 A |  | 0% → 100% | 6d → none |  |  |
| 96 | **TA-Integración** | 2008-01-28 09:00 A | 2008-01-28 19:00 A |  | 0% → 100% | 6d → none |  |  |
| 97 | A1 - Realizar integración de codigo para revisión | 2008-01-28 09:00 A | 2008-01-28 19:00 A |  | 0% → 100% | 6d → none |  | resources 91808821-JESUS ALVARO LAZCANO GUZMAN [6.25%] → 91808821-JESUS ALVARO LAZCANO GUZMAN [6.2%] |
| 98 | **WF_Pruebas** | 2008-01-08 09:00 → 2008-01-28 09:00 A (+20d) | 2008-01-29 19:00 → 2008-02-04 19:00 A (+6d) | 22d? → 6d? | 0% → 100% | 5d → none |  |  |
| 99 | **TA-Diseñar Casos de Prueba** | 2008-01-28 09:00 A | 2008-01-29 19:00 A |  | 0% → 100% | 5d → none |  |  |
| 100 | A1 - ERS-CapturarAbono - Diseñar CP-0007-RealizarEncuesta | 2008-01-28 09:00 A | 2008-01-29 19:00 A |  | 0% → 100% | 5d → none |  | resources 91576172-JOSUE RUBIO RAMIREZ [18.75%] → 91576172-JOSUE RUBIO RAMIREZ [18.8%] |
| 101 | **TA-Realizar Pruebas de Sistemas** | 2008-01-28 09:00 → 2008-01-30 09:00 A (+2d) | 2008-01-29 19:00 → 2008-02-04 19:00 A (+6d) | 2d → 4d | 0% → 100% | 5d → none |  |  |

| ID | Task | Start | Finish | Duration | Complete | Total float | Predecessors | Other |
| --- | --- | --- | --- | --- | --- | --- | --- | --- |
| 102 | A1 - ERS-CapturarAbono - Probar CP-0007-RealizarEncuesta | 2008-01-28 09:00 → 2008-02-01 09:00 A (+4d) | 2008-01-29 19:00 → 2008-02-04 19:00 A (+6d) |  | 0% → 100% | 5d → none | none → 103 | constraint start no earlier than 2008-01-28 08:30 → none; resources 91576172-JOSUE RUBIO RAMIREZ [18.75%] → 91576172-JOSUE RUBIO RAMIREZ [18.8%] |
| 103 | C1 - ERS-CapturarAbono - Probar CP-0007-RealizarEncuesta | 2008-01-28 09:00 → 2008-01-30 09:00 A (+2d) | 2008-01-29 19:00 → 2008-01-31 19:00 A (+2d) |  | 0% → 100% | 5d → none | none → 102 | constraint start no earlier than 2008-01-28 08:30 → start no earlier than 2008-01-30 08:30; resources 91576172-JOSUE RUBIO RAMIREZ [6.25%] → 91576172-JOSUE RUBIO RAMIREZ [6.2%] |
| 104 | **TA-Realizar Seguimiento de Defectos** | 2008-01-08 09:00 → 2008-01-28 09:00 A (+20d) | 2008-01-08 19:00 → 2008-01-28 19:00 A (+20d) |  | 0% → 100% | 26d → none |  |  |
| 105 | A1 - Realizar seguimiento de defectos | 2008-01-08 09:00 → 2008-01-28 09:00 A (+20d) | 2008-01-08 19:00 → 2008-01-28 19:00 A (+20d) |  | 0% → 100% | 26d → none |  | constraint start no earlier than 2008-01-08 08:30 → start no earlier than 2008-01-28 08:30 |
| 106 | **WF_Q/A** | 2008-01-28 09:00 → 2008-02-12 09:00 (+15d) | 2008-01-30 19:00 → 2008-02-12 19:00 (+13d) | 3d? → 1d? |  | 5d → 0d |  |  |
| 107 | **TA-Realizar Auditorías del Proyecto** | 2008-01-28 09:00 → 2008-02-12 09:00 (+15d) | 2008-01-28 19:00 → 2008-02-12 19:00 (+15d) |  |  | 7d → 0d |  |  |
| 108 | A1 - Realizar auditoria del proyecto Pendiente | 2008-01-28 09:00 → 2008-02-12 09:00 (+15d) | 2008-01-28 19:00 → 2008-02-12 19:00 (+15d) |  |  | 7d → 0d |  | constraint start no earlier than 2008-01-28 08:30 → start no earlier than 2008-02-12 08:30 |
| 109 | **TA-Realizar Seguimiento de Desviaciones** | 2008-01-28 09:00 → 2008-02-12 09:00 (+15d) | 2008-01-30 19:00 → 2008-02-12 19:00 (+13d) | 3d → 1d |  | 5d → 0d |  |  |
| 110 | A1 - Realizar seguimiento de desviaciones | 2008-01-28 09:00 → 2008-02-12 09:00 (+15d) | 2008-01-30 19:00 → 2008-02-12 19:00 (+13d) | 24h → 8h |  | 5d → 0d |  | constraint start no earlier than 2008-01-28 08:30 → start no earlier than 2008-02-12 08:30; resources 92324738-GABRIELA VALDEZ MUÑOZ [4.17%] → 92324738-GABRIELA VALDEZ MUÑOZ [12.5%] |
| 111 | **WF_Instalación** | 2008-02-06 09:00 A | 2008-02-06 19:00 A |  | 0% → 100% | 0d → none |  |  |
| 112 | **TA-Aprobación de Versión de Sistema** | 2008-02-06 09:00 A | 2008-02-06 19:00 A |  | 0% → 100% | 0d → none |  |  |
| 113 | A1 - Probar Sistema | 2008-02-06 09:00 A | 2008-02-06 19:00 A |  | 0% → 100% | 0d → none |  |  |
| 114 | **TA-Instalar y Configurar Versión del Sistema** | 2008-02-06 09:00 A | 2008-02-06 19:00 A |  | 0% → 100% | 0d → none |  |  |
| 115 | A1 - Instalar y configurar la versión del sistema | 2008-02-06 09:00 A | 2008-02-06 19:00 A |  | 0% → 100% | 0d → none |  |  |
